# CPROY_V1.0_2020

Schedule from MS Project, 2020-01-08 to 2020-03-17, status date 2011-06-30, costs in €, A marks actual dates.
Entel

## Calendars

- Estándar: Mon-Fri 09:00-13:00, 15:00-19:00; Sat-Sun off. Exceptions (off unless hours are given): 2020-01-11 09:00-13:00, 15:00-19:00, 2020-01-18 09:00-13:00, 15:00-19:00.

## Resources

| Resource | Rate |
| --- | --- |
| DC | 1 |

## Schedule

| ID | WBS | Task | Type | Duration | Start | Finish | Predecessors | Complete | Remaining | Baseline start | Baseline finish | Baseline duration | Total slack | Free slack | Constraint | Deadline | Work | Actual work | Cost | Baseline cost | Actual cost | Text6 | Text7 | Text20 | Text1 |
| --- | --- | --- | --- | --- | --- | --- | --- | --- | --- | --- | --- | --- | --- | --- | --- | --- | --- | --- | --- | --- | --- | --- | --- | --- | --- |
| 1 | 1 | **CPROY_V1.0_2020 Cronograma EventSoft 2020** |  | 52d | 2020-01-08 A | 2020-03-17 |  | 40% | 31.12d | 2011-06-01 | 2011-07-14 | 32d |  |  |  |  | 261.31h | 3.2h | 189.31 | 1,091.27 | 3.2 | 0% | 0% | 30/09/2009 |  |
| 2 | 1.1 | **Procesos de Gestión** |  | 40d | 2020-01-08 A | 2020-02-28 |  | 54% | 18.51d | 2011-06-01 | 2011-07-14 | 32d | 0d |  |  | 2009-10-06 | 261.31h | 3.2h | 189.31 | 1,091.27 | 3.2 | 0% | 0% | 30/10/2009 | 1.1 |
| 3 | 1.1.1 | **Inicio** |  | 23d | 2020-01-08 A | 2020-02-05 |  | 75% | 5.75d | 2011-06-01 | 2011-07-01 | 23d | -9d | 0d |  | 2009-10-06 | 69.31h | 3.2h | 69.31 | 586.27 | 3.2 | 0% | 0% | 31/08/2011 | 1.2 |
| 4 | 1.1.1.1 | Revisión de metodología de trabajo |  | 3d | 2020-01-08 A | 2020-01-10 A |  | 100% |  | 2011-06-01 | 2011-06-07 | 5d |  |  | start no earlier than 2020-01-08 | 2009-10-06 |  |  |  | 40 |  | 1000% | 100% | 31/12/2009 | 1.3 |
| 5 | 1.1.1.2 | **Plan del Proyecto** |  | 10d | 2020-01-11 A | 2020-01-22 | 4 | 91% | 0.91d | 2011-06-07 | 2011-06-17 | 8d | 0d |  |  | 2009-10-06 |  |  |  | 292.96 |  | 0% | 0% | 31/01/2010 | 1.4 |
| 6 | 1.1.1.2.1 | **Elaboración de entregables para la PC1** |  | 5d | 2020-01-11 A | 2020-01-16 |  | 89% | 0.55d | 2011-06-07 | 2011-06-15 | 6d | 0d |  |  | 2009-10-06 |  |  |  | 132.96 |  | 0% | 0% | 28/02/2010 | 1.5 |
| 7 | 1.1.1.2.1.1 | Elaboración de Proceso de gestión de proyectos |  | 4d | 2020-01-11 A | 2020-01-15 A | 4 | 100% |  | 2011-06-08 | 2011-06-08 | 1d |  |  | start no earlier than 2020-01-11 | 2009-10-06 |  |  |  |  |  | 95% | 100% | 31/03/2010 | 1.6 |
| 8 | 1.1.1.2.1.2 | Elaboración de Plan proyecto PP-PMC |  | 4d | 2020-01-11 A | 2020-01-15 | 4 | 75% | 1d | 2011-06-08 | 2011-06-08 | 1d | -2696d | 0d |  | 2009-10-06 |  |  |  |  |  | 60% | 60% | 30/04/2010 |  |
| 9 | 1.1.1.2.1.3 | Elaboración del Cronograma del proyecto |  | 4d | 2020-01-11 A | 2020-01-15 | 4 | 35% | 2.6d | 2011-06-09 | 2011-06-09 | 1d | -2696d | 0d |  | 2009-10-06 |  |  |  |  |  | 35% | 35% | 31/05/2010 | 2.1 |
| 10 | 1.1.1.2.1.4 | Elaboración del Acta de reunión semanal |  | 1d | 2020-01-11 A | 2020-01-11 A | 4 | 100% |  | 2011-06-10 | 2011-06-10 | 1d |  |  |  | 2009-10-06 |  |  |  | 9.2 |  | 95% | 100% | 30/06/2010 | 2.1.1 |
| 11 | 1.1.1.2.1.5 | Elaboración del Registro de riesgo PP-PMC |  | 4d | 2020-01-11 A | 2020-01-15 A | 4 | 100% |  | 2011-06-13 | 2011-06-13 | 1d |  |  |  | 2009-10-06 |  |  |  | 9.06 |  | 100% | 100% | 31/07/2010 | 2.1.2 |
| 12 | 1.1.1.2.1.6 | Elaboración del Informe avance semanal |  | 1d | 2020-01-16 A | 2020-01-16 | 9, 10, 11 | 95% | 0.05d | 2011-06-14 | 2011-06-14 | 1d | -2697d | 0d |  | 2009-10-06 |  |  |  | 9.1 |  | 95% | 95% |  | 2.1.3 |
| 13 | 1.1.1.2.1.7 | Elaboración del documento de Aceptación de entregables |  | 1d | 2020-01-11 A | 2020-01-11 A | 4 | 100% |  | 2011-06-15 | 2011-06-15 | 1d |  |  |  | 2009-10-06 |  |  |  | 8 |  | 100% | 100% |  | 2.2 |
| 14 | 1.1.1.2.1.8 | Elaboración del Proceso Gestión Requerimiento |  | 4d | 2020-01-11 A | 2020-01-15 A | 4 | 100% |  | 2011-06-07 | 2011-06-07 | 0d |  |  |  | 2009-10-06 |  |  |  |  |  | 100% | 100% |  | 2.3 |
| 15 | 1.1.1.2.1.9 | Elaboración de la Lista Maestra de Requerimiento (LMR-Proy) |  | 4d | 2020-01-11 A | 2020-01-15 A | 4 | 100% |  | 2011-06-08 | 2011-06-08 | 1d |  |  |  | 2009-10-06 |  |  |  | 8 |  | 100% | 100% |  | 2.4 |
| 16 | 1.1.1.2.1.10 | Elaboración de la Matriz de trazabilidad |  | 4d | 2020-01-11 A | 2020-01-15 A | 4 | 100% |  | 2011-06-09 | 2011-06-09 | 1d |  |  |  | 2009-10-06 |  |  |  |  |  | 100% | 100% |  |  |
| 17 | 1.1.1.2.1.11 | Elaboración del documento de Solicitud Cambios a Requerimientos |  | 1d | 2020-01-11 A | 2020-01-11 A | 4 | 100% |  | 2011-06-10 | 2011-06-10 | 1d |  |  |  | 2009-10-06 |  |  |  | 8 |  | 100% | 100% |  | 3.1 |
| 18 | 1.1.1.2.1.12 | Elaboración del documento de Registro Cambios a Requerimientos |  | 1d | 2020-01-11 A | 2020-01-11 A | 4 | 100% |  | 2011-06-13 | 2011-06-13 | 1d |  |  |  | 2009-10-06 |  |  |  | 8 |  | 100% | 100% |  | 3.2 |
| 19 | 1.1.1.2.2 | **Revisión interna** |  | 2d | 2020-01-17 A | 2020-01-18 A |  | 100% |  | 2011-06-16 | 2011-06-17 | 2d |  |  |  | 2009-10-06 |  |  |  | 16 |  | 100% | 100% |  |  |
| 20 | 1.1.1.2.2.1 | Revisión por el equipo del proyecto |  | 1d | 2020-01-17 A | 2020-01-17 A | 6, 12 | 100% |  | 2011-06-16 | 2011-06-16 | 1d |  |  |  | 2009-10-06 |  |  |  | 8 |  | 100% | 100% |  | 4.1 |
| 21 | 1.1.1.2.2.2 | Ajustes al Plan de Proyecto |  | 1d | 2020-01-18 A | 2020-01-18 A | 20 | 100% |  | 2011-06-17 | 2011-06-17 | 1d |  |  |  | 2009-10-06 |  |  |  | 8 |  | 100% | 100% |  | 4.2 |
| 22 | 1.1.1.2.3 | **Gestión de Configuración** |  | 1d | 2020-01-17 A | 2020-01-18 A |  | 100% |  | 2011-06-08 | 2011-06-09 | 2d |  |  |  | 2009-10-06 |  |  |  | 24 |  | 100% | 100% |  | 5.2 |
| 23 | 1.1.1.2.3.1 | Solicitar auditoria de GC | milestone | 0d | 2020-01-17 A | 2020-01-17 A | 20 | 100% |  | 2011-06-08 | 2011-06-08 | 1d |  |  |  | 2009-10-06 |  |  |  | 8 |  | 100% | 100% |  | 5.3 |
| 24 | 1.1.1.2.3.2 | Auditoria de GC de Proyecto Interno |  | 1d | 2020-01-18 A | 2020-01-18 A | 23 | 100% |  | 2011-06-09 | 2011-06-09 | 1d |  |  |  | 2009-10-06 |  |  |  |  |  | 100% | 100% |  |  |

| ID | WBS | Task | Type | Duration | Start | Finish | Predecessors | Complete | Remaining | Baseline start | Baseline finish | Baseline duration | Total slack | Free slack | Constraint | Deadline | Resources | Work | Actual work | Cost | Baseline cost | Actual cost | Text1 | Text6 | Text7 |
| --- | --- | --- | --- | --- | --- | --- | --- | --- | --- | --- | --- | --- | --- | --- | --- | --- | --- | --- | --- | --- | --- | --- | --- | --- | --- |
| 25 | 1.1.1.2.4 | **Aseguramiento de Calidad** |  | 2d | 2020-01-20 A | 2020-01-21 A |  | 100% |  | 2011-06-10 | 2011-06-15 | 4d |  |  |  | 2009-10-06 |  |  |  |  | 24 |  | 6.1 | 100% | 100% |
| 26 | 1.1.1.2.4.1 | Preparar las actividades de QA |  | 1d | 2020-01-20 A | 2020-01-20 A | 22 | 100% |  | 2011-06-10 | 2011-06-10 | 1d |  |  | start no earlier than 2020-01-19 | 2009-10-06 |  |  |  |  | 8 |  | 6.2 | 100% | 100% |
| 27 | 1.1.1.2.4.2 | Ejecutar la Revisión de QA - Procesos | milestone | 0d | 2020-01-20 A | 2020-01-20 A | 26 | 100% |  | 2011-06-10 | 2011-06-10 | 0d |  |  |  | 2009-10-06 |  |  |  |  |  |  |  | 100% | 100% |
| 28 | 1.1.1.2.4.3 | Levantar la No Conformidad | milestone | 0d | 2020-01-20 A | 2020-01-20 A | 27 | 100% |  | 2011-06-13 | 2011-06-13 | 1d |  |  |  | 2009-10-06 |  |  |  |  |  |  |  | 100% | 100% |
| 29 | 1.1.1.2.4.4 | Realizar el seguimiento | milestone | 0d | 2020-01-20 A | 2020-01-20 A | 28 | 100% |  | 2011-06-14 | 2011-06-14 | 1d |  |  |  | 2009-10-06 |  |  |  |  | 8 |  | 8.1 | 100% | 100% |
| 30 | 1.1.1.2.4.5 | Elaborar e Informar las actividades de QA a la Gerencia del Servicio |  | 1d | 2020-01-21 A | 2020-01-21 A | 29 | 100% |  | 2011-06-15 | 2011-06-15 | 1d |  |  |  | 2009-10-06 |  |  |  |  | 8 |  | 8.2 | 100% | 100% |
| 31 | 1.1.1.2.5 | **Revisión por el cliente** |  | 1d | 2020-01-22 A | 2020-01-22 A |  | 100% |  | 2011-06-16 | 2011-06-17 | 2d |  |  |  | 2009-10-06 |  |  |  |  | 32 |  | 8.3 | 100% | 100% |
| 32 | 1.1.1.2.5.1 | Entrega de Plan del Proyecto |  | 1d | 2020-01-22 A | 2020-01-22 A | 25 | 100% |  | 2011-06-16 | 2011-06-16 | 1d |  |  |  | 2009-10-06 |  |  |  |  | 8 |  | 8.4 | 100% | 100% |
| 33 | 1.1.1.2.5.2 | Reunión conjunta de revisión del Plan del Proyecto |  | 1d | 2020-01-22 A | 2020-01-22 A | 25 | 100% |  | 2011-06-17 | 2011-06-17 | 1d |  |  |  | 2009-10-06 |  |  |  |  | 8 |  | 8.5 | 100% | 100% |
| 34 | 1.1.1.3 | **Kick Off Meeting Interno** |  | 4d | 2020-01-23 A | 2020-01-28 | 5 | 10% | 3.6d | 2011-06-20 | 2011-06-23 | 4d | -3d | 0d |  | 2009-10-06 |  | 29.31h | 3.2h | 29.31 | 29.31 | 3.2 |  | 0% | 0% |
| 35 | 1.1.1.3.1 | Elaboración de presentación |  | 1d | 2020-01-23 A | 2020-01-23 |  | 40% | 0.6d | 2011-06-20 | 2011-06-20 | 1d | -2703d | 0d |  | 2009-10-06 | DC | 5.31h | 3.2h | 5.31 | 5.31 | 3.2 | 9.1 | 0% | 0% |
| 36 | 1.1.1.3.2 | Invitación a reunión |  | 1d | 2020-01-24 | 2020-01-24 | 35 |  |  | 2011-06-21 | 2011-06-21 | 1d | -2703d | 0d |  | 2009-10-06 | DC | 8h |  | 8 | 8 |  | 9.2 | 0% | 0% |
| 37 | 1.1.1.3.3 | Kick Off Meeting Interno |  | 1d | 2020-01-27 | 2020-01-27 | 36 |  |  | 2011-06-22 | 2011-06-22 | 1d | -2703d | 0d |  | 2009-10-06 | DC | 8h |  | 8 | 8 |  | 9.3 | 0% | 0% |
| 38 | 1.1.1.3.4 | Acta de reunión con acuerdos tomados |  | 1d | 2020-01-28 | 2020-01-28 | 37 |  |  | 2011-06-23 | 2011-06-23 | 1d | -2703d | 0d |  | 2009-10-06 | DC | 8h |  | 8 | 8 |  | 9.4 | 0% | 0% |
| 39 | 1.1.1.4 | **Kick Off Meeting con Cliente** |  | 6d | 2020-01-29 | 2020-02-05 | 34 |  |  | 2011-06-24 | 2011-07-01 | 6d | -2703d | 0d |  | 2009-10-06 |  | 40h |  | 40 | 40 |  | 10 | 0% | 0% |
| 40 | 1.1.1.4.1 | Elaboración de presentación |  | 1d | 2020-01-29 | 2020-01-29 |  |  |  | 2011-06-24 | 2011-06-24 | 1d | -2703d | 0d |  | 2009-10-06 | DC | 8h |  | 8 | 8 |  | 10.1 | 0% | 0% |
| 41 | 1.1.1.4.2 | Aprobación de presentación por Coordinador del Proyecto |  | 1d | 2020-01-30 | 2020-01-30 | 40 |  |  | 2011-06-27 | 2011-06-27 | 1d | -2703d | 0d |  | 2009-10-06 | DC | 8h |  | 8 | 8 |  | 10.2 | 0% | 0% |
| 42 | 1.1.1.4.3 | Aprobación por Cliente de agenda, presentación y modelo de / Acta |  | 1d | 2020-01-31 | 2020-01-31 | 41 |  |  | 2011-06-28 | 2011-06-28 | 1d | -2703d | 0d |  | 2009-10-06 | DC | 8h |  | 8 | 8 |  | 10.3 | 0% | 0% |
| 43 | 1.1.1.4.4 | Invitación a reunión |  | 1d | 2020-02-03 | 2020-02-03 | 42 |  |  | 2011-06-29 | 2011-06-29 | 1d | -2703d | 0d |  | 2009-10-06 |  |  |  |  |  |  | 11 | 0% | 0% |
| 44 | 1.1.1.4.5 | Kick Off Meeting con Cliente |  | 1d | 2020-02-04 | 2020-02-04 | 43 |  |  | 2011-06-30 | 2011-06-30 | 1d | -2703d | 0d |  | 2009-10-06 | DC | 8h |  | 8 | 8 |  | 12 | 0% | 0% |
| 45 | 1.1.1.4.6 | Acta de reunión con acuerdos tomados |  | 1d | 2020-02-05 | 2020-02-05 | 44 |  |  | 2011-07-01 | 2011-07-01 | 1d | -2703d | 0d |  | 2009-10-06 | DC | 8h |  | 8 | 8 |  | 13 | 0% | 0% |
| 46 | 1.1.2 | **Asignación, Ejecución, Seguimiento y Control** |  | 8d | 2020-02-06 | 2020-02-17 | 3 |  |  | 2011-07-04 | 2011-07-14 | 9d | -2703d | 0d |  | 2009-10-06 |  | 192h |  | 120 | 216 |  | 14 | 0% | 0% |
| 47 | 1.1.2.1 | **Traspaso de Información** |  | 1d | 2020-02-06 | 2020-02-06 |  |  |  | 2011-07-04 | 2011-07-04 | 1d | -2703d | 0d |  | 2009-10-06 | DC | 16h |  | 16 | 16 |  | 15 | 0% | 0% |
| 48 | 1.1.2.1.1 | Cierre de puntos pendientes del Acta de Traspaso de Información |  | 1d | 2020-02-06 | 2020-02-06 |  |  |  | 2011-07-04 | 2011-07-04 | 1d | -2703d | 0d |  | 2009-10-06 | DC | 8h |  | 8 | 8 |  | 16 | 0% | 0% |

| ID | WBS | Task | Type | Duration | Start | Finish | Predecessors | Baseline start | Baseline finish | Baseline duration | Total slack | Free slack | Constraint | Deadline | Resources | Work | Cost | Baseline cost | Text1 | Text6 | Text7 |
| --- | --- | --- | --- | --- | --- | --- | --- | --- | --- | --- | --- | --- | --- | --- | --- | --- | --- | --- | --- | --- | --- |
| 49 | 1.1.2.2 | **Aseguramiento de Calidad Mes 1** |  | 4d | 2020-02-06 | 2020-02-11 |  | 2011-07-04 | 2011-07-07 | 4d | -2699d | 0d |  | 2009-10-06 | DC | 24h | 24 | 24 | 6.1 | 0% | 0% |
| 50 | 1.1.2.2.1 | Preparar las actividades de QA |  | 1d | 2020-02-06 | 2020-02-06 |  | 2011-07-04 | 2011-07-04 | 1d | -2699d | 0d |  | 2009-10-06 | DC | 8h | 8 | 8 | 6.2 | 0% | 0% |
| 51 | 1.1.2.2.2 | Ejecutar la Revisión de QA - Procesos | milestone | 0d | 2020-02-06 | 2020-02-06 | 50 | 2011-07-04 | 2011-07-04 | 0d | -2699d | 0d |  | 2009-10-06 |  |  |  |  |  | 0% | 0% |
| 52 | 1.1.2.2.3 | Levantar la No Conformidad |  | 1d | 2020-02-07 | 2020-02-07 | 51 | 2011-07-05 | 2011-07-05 | 1d | -2699d | 0d |  | 2009-10-06 |  |  |  |  |  | 0% | 0% |
| 53 | 1.1.2.2.4 | Realizar el seguimiento |  | 1d | 2020-02-10 | 2020-02-10 | 52 | 2011-07-06 | 2011-07-06 | 1d | -2699d | 0d |  | 2009-10-06 | DC | 8h | 8 | 8 | 8.1 | 0% | 0% |
| 54 | 1.1.2.2.5 | Elaborar e Informar las actividades de QA a la Gerencia del Servicio |  | 1d | 2020-02-11 | 2020-02-11 | 53 | 2011-07-07 | 2011-07-07 | 1d | -2699d | 0d |  | 2009-10-06 | DC | 8h | 8 | 8 | 8.2 | 0% | 0% |
| 55 | 1.1.2.3 | **Aseguramiento de Calidad Mes 2** |  | 4d | 2020-02-06 | 2020-02-11 |  | 2011-07-04 | 2011-07-07 | 4d | -2699d | 0d |  | 2009-10-06 | DC | 24h | 24 | 24 | 6.1 | 0% | 0% |
| 56 | 1.1.2.3.1 | Preparar las actividades de QA |  | 1d | 2020-02-06 | 2020-02-06 |  | 2011-07-04 | 2011-07-04 | 1d | -2699d | 0d |  | 2009-10-06 | DC | 8h | 8 | 8 | 6.2 | 0% | 0% |
| 57 | 1.1.2.3.2 | Ejecutar la Revisión de QA - Procesos | milestone | 0d | 2020-02-06 | 2020-02-06 | 56 | 2011-07-04 | 2011-07-04 | 0d | -2699d | 0d |  | 2009-10-06 |  |  |  |  |  | 0% | 0% |
| 58 | 1.1.2.3.3 | Levantar la No Conformidad |  | 1d | 2020-02-07 | 2020-02-07 | 57 | 2011-07-05 | 2011-07-05 | 1d | -2699d | 0d |  | 2009-10-06 |  |  |  |  |  | 0% | 0% |
| 59 | 1.1.2.3.4 | Realizar el seguimiento |  | 1d | 2020-02-10 | 2020-02-10 | 58 | 2011-07-06 | 2011-07-06 | 1d | -2699d | 0d |  | 2009-10-06 | DC | 8h | 8 | 8 | 8.1 | 0% | 0% |
| 60 | 1.1.2.3.5 | Elaborar e Informar las actividades de QA a la Gerencia del Servicio |  | 1d | 2020-02-11 | 2020-02-11 | 59 | 2011-07-07 | 2011-07-07 | 1d | -2699d | 0d |  | 2009-10-06 | DC | 8h | 8 | 8 | 8.2 | 0% | 0% |
| 61 | 1.1.2.4 | **Planeamiento, asignación y control semanal** |  | 7d | 2020-02-07 | 2020-02-17 | 47 | 2011-07-05 | 2011-07-13 | 7d | -2703d | 0d |  | 2009-10-06 | DC | 128h | 56 | 56 | 17 | 0% | 0% |
| 62 | 1.1.2.4.1 | **Semana yyyy-mm-dd** |  | 7d | 2020-02-07 | 2020-02-17 |  | 2011-07-05 | 2011-07-13 | 7d | -2703d | 0d |  |  |  | 72h |  |  |  | 0% | 0% |
| 63 | 1.1.2.4.1.1 | Preparar Comité Interno de Proyecto |  | 1d | 2020-02-07 | 2020-02-07 |  | 2011-07-05 | 2011-07-05 | 1d | -2703d | 0d |  |  |  | 8h |  |  |  | 0% | 0% |
| 64 | 1.1.2.4.1.2 | Generar métricas |  | 1d | 2020-02-10 | 2020-02-10 | 63 | 2011-07-06 | 2011-07-06 | 1d | -2703d | 0d |  |  |  | 8h |  |  |  | 0% | 0% |
| 65 | 1.1.2.4.1.3 | Elaborar informe de estado de proyecto |  | 1d | 2020-02-11 | 2020-02-11 | 64 | 2011-07-07 | 2011-07-07 | 1d | -2703d | 0d |  |  |  | 8h |  |  |  | 0% | 0% |
| 66 | 1.1.2.4.1.4 | Comité interno de Proyecto Interno |  | 1d | 2020-02-12 | 2020-02-12 | 65 | 2011-07-08 | 2011-07-08 | 1d | -2703d | 0d |  |  |  | 8h |  |  |  | 0% | 0% |
| 67 | 1.1.2.4.1.5 | Asignación de trabajo |  | 1d | 2020-02-13 | 2020-02-13 | 66 | 2011-07-11 | 2011-07-11 | 1d | -2703d | 0d |  |  |  | 8h |  |  |  | 0% | 0% |
| 68 | 1.1.2.4.1.6 | Consolidación de métricas |  | 1d | 2020-02-14 | 2020-02-14 | 67 | 2011-07-12 | 2011-07-12 | 1d | -2703d | 0d |  |  |  | 8h |  |  |  | 0% | 0% |
| 69 | 1.1.2.4.1.7 | Comité de analistas de Proyectos |  | 1d | 2020-02-17 | 2020-02-17 | 68 | 2011-07-13 | 2011-07-13 | 1d | -2703d | 0d |  |  |  | 8h |  |  |  | 0% | 0% |
| 70 | 1.1.2.4.1.8 | Ejecutar la Revisión de procesos |  | 1d | 2020-02-07 | 2020-02-07 |  | 2011-07-05 | 2011-07-05 | 1d | -2697d | 0d |  |  |  | 8h |  |  |  | 0% | 0% |
| 71 | 1.1.2.4.1.9 | Auditoria semanal de gestión de configuración |  | 1d | 2020-02-07 | 2020-02-07 |  | 2011-07-05 | 2011-07-05 | 1d | -2697d | 0d |  |  |  | 8h |  |  |  | 0% | 0% |
| 72 | 1.1.3 | **Cierre** |  | 8d | 2020-02-19 | 2020-02-28 |  | 2011-06-01 | 2011-06-10 | 8d |  |  |  |  |  |  |  |  |  | 0% | 0% |
| 73 | 1.1.3.1 | Revisión de Entregables del Proyecto |  | 1d | 2020-02-21 | 2020-02-21 |  | 2011-06-01 | 2011-06-01 | 1d | -2709d | 0d | finish no earlier than 2020-02-21 |  |  |  |  |  |  | 0% | 0% |
| 74 | 1.1.3.2 | Elaboración de Acta de Cierre |  | 1d | 2020-02-24 | 2020-02-24 | 73 | 2011-06-02 | 2011-06-02 | 1d | -2709d | 0d |  |  |  |  |  |  |  | 0% | 0% |

| ID | WBS | Task | Type | Duration | Start | Finish | Predecessors | Baseline start | Baseline finish | Baseline duration | Total slack | Free slack | Text6 | Text7 |
| --- | --- | --- | --- | --- | --- | --- | --- | --- | --- | --- | --- | --- | --- | --- |
| 75 | 1.1.3.3 | **Relatorio de Proyectos** |  | 1d | 2020-02-25 | 2020-02-25 |  | 2011-06-03 | 2011-06-07 | 3d |  |  | 0% | 0% |
| 76 | 1.1.3.3.1 | Elaborar relatorio de proyecto |  | 1d | 2020-02-25 | 2020-02-25 | 74 | 2011-06-03 | 2011-06-03 | 1d | -2709d | 0d | 0% | 0% |
| 77 | 1.1.3.3.2 | Revisión y ajustes de relatorio por el equipo del proyecto | milestone | 0d | 2020-02-25 | 2020-02-25 | 76 | 2011-06-06 | 2011-06-06 | 1d | -2709d | 0d | 0% | 0% |
| 78 | 1.1.3.3.3 | Revisión de relatorio con los Proyectos | milestone | 0d | 2020-02-25 | 2020-02-25 | 77 | 2011-06-07 | 2011-06-07 | 1d | -2709d | 0d | 0% | 0% |
| 79 | 1.1.3.4 | **Gestión de Configuración** |  | 1d | 2020-02-26 | 2020-02-26 |  | 2011-06-08 | 2011-06-10 | 3d |  |  | 0% | 0% |
| 80 | 1.1.3.4.1 | Solicitar auditoria de GC | milestone | 0d | 2020-02-26 | 2020-02-26 | 75 | 2011-06-08 | 2011-06-08 | 1d | -2709d | 0d | 0% | 0% |
| 81 | 1.1.3.4.2 | Auditoria de Gestión de Configuración de Proyecto | milestone | 0d | 2020-02-26 | 2020-02-26 | 80 | 2011-06-09 | 2011-06-09 | 1d | -2709d | 0d | 0% | 0% |
| 82 | 1.1.3.4.3 | Archivar registros del proyecto | milestone | 0d | 2020-02-26 | 2020-02-26 | 81 | 2011-06-10 | 2011-06-10 | 1d | -2709d | 0d | 0% | 0% |
| 83 | 1.2 | **Procesos de Ingeniería** |  | 13d | 2020-02-01 | 2020-02-18 |  | 2011-06-01 | 2011-06-07 | 5d |  |  | 0% | 0% |
| 84 | 1.2.1 | **EventSoft** |  | 11d | 2020-02-04 | 2020-02-18 |  | 2011-06-01 | 2011-06-07 | 5d |  |  | 0% | 0% |
| 85 | 1.2.1.1 | **Analisis** |  | 5d | 2020-02-04 | 2020-02-10 |  | 2011-06-01 | 2011-06-07 | 5d |  |  | 0% | 0% |
| 86 | 1.2.1.1.1 | **Casos de Uso** |  | 1d | 2020-02-04 | 2020-02-04 |  | 2011-06-01 | 2011-06-03 | 3d |  |  | 0% | 0% |
| 87 | 1.2.1.1.1.1 | Entender el OGC | milestone | 0d | 2020-02-04 | 2020-02-04 |  | 2011-06-01 | 2011-06-01 | 1d | 31d | 0d | 0% | 0% |
| 88 | 1.2.1.1.1.2 | Capacitación en el OGC | milestone | 0d | 2020-02-04 | 2020-02-04 | 87 | 2011-06-02 | 2011-06-02 | 1d | 31d | 0d | 0% | 0% |
| 89 | 1.2.1.1.1.3 | Actualizar glosario de términos | milestone | 0d | 2020-02-04 | 2020-02-04 | 88 | 2011-06-03 | 2011-06-03 | 1d | 31d | 0d | 0% | 0% |
| 90 | 1.2.1.1.2 | **Modelo de Analisis** |  | 1d | 2020-02-04 | 2020-02-04 |  | 2011-06-06 | 2011-06-07 | 2d |  |  | 0% | 0% |
| 91 | 1.2.1.1.2.1 | Solicitud de relación de usuarios líderes al líder del proyecto | milestone | 0d | 2020-02-04 | 2020-02-04 | 89 | 2011-06-06 | 2011-06-06 | 1d | 31d | 0d | 0% | 0% |
| 92 | 1.2.1.1.2.2 | Solicitud de usuarios objetivos a los usuarios líderes | milestone | 0d | 2020-02-04 | 2020-02-04 | 91 | 2011-06-07 | 2011-06-07 | 1d | 31d |  | 0% | 0% |
| 93 | 1.2.1.2 | **Diseño** |  | 5d | 2020-02-05 | 2020-02-11 |  | 2011-06-01 | 2011-06-07 | 5d |  |  | 0% | 0% |
| 94 | 1.2.1.2.1 | **Documento de Diseño** |  | 1d | 2020-02-05 | 2020-02-05 |  | 2011-06-01 | 2011-06-01 | 1d | 29d |  | 0% | 0% |
| 95 | 1.2.1.2.1.1 | Análisis de la información |  | 1d | 2020-02-05 | 2020-02-05 |  | 2011-06-01 | 2011-06-01 | 1d | 29d |  | 0% | 0% |
| 96 | 1.2.1.2.1.2 | Definir forma y características de formación |  | 1d | 2020-02-05 | 2020-02-05 |  | 2011-06-01 | 2011-06-01 | 1d | 29d |  | 0% | 0% |
| 97 | 1.2.1.2.1.3 | Definir medios de comunicación |  | 1d | 2020-02-05 | 2020-02-05 |  | 2011-06-01 | 2011-06-01 | 1d | 29d |  | 0% | 0% |
| 98 | 1.2.1.2.1.4 | Elaboración de presentación de la estrategia |  | 1d | 2020-02-05 | 2020-02-05 |  | 2011-06-01 | 2011-06-01 | 1d | 29d |  | 0% | 0% |

| ID | WBS | Task | Duration | Start | Finish | Predecessors | Baseline start | Baseline finish | Baseline duration | Total slack | Free slack | Text6 | Text7 |
| --- | --- | --- | --- | --- | --- | --- | --- | --- | --- | --- | --- | --- | --- |
| 99 | 1.2.1.2.2 | **Verificación del coordinador** | 2d | 2020-02-05 | 2020-02-06 |  | 2011-06-01 | 2011-06-02 | 2d | 28d |  | 0% | 0% |
| 100 | 1.2.1.2.2.1 | Verificación de la estrategía de formación y comunicación por el coordinador | 1d | 2020-02-05 | 2020-02-05 |  | 2011-06-01 | 2011-06-01 | 1d | 28d | 0d | 0% | 0% |
| 101 | 1.2.1.2.2.2 | Adecuación de Cambios | 1d | 2020-02-06 | 2020-02-06 | 100 | 2011-06-02 | 2011-06-02 | 1d | 28d |  | 0% | 0% |
| 102 | 1.2.1.2.3 | **Aseguramiento de calidad** | 5d | 2020-02-05 | 2020-02-11 |  | 2011-06-01 | 2011-06-07 | 5d | 25d |  | 0% | 0% |
| 103 | 1.2.1.2.3.1 | Preparar las actividades de QA. | 1d | 2020-02-05 | 2020-02-05 |  | 2011-06-01 | 2011-06-01 | 1d | 25d | 0d | 0% | 0% |
| 104 | 1.2.1.2.3.2 | Ejecutar la Revisión de QA | 1d | 2020-02-06 | 2020-02-06 | 103 | 2011-06-02 | 2011-06-02 | 1d | 25d | 0d | 0% | 0% |
| 105 | 1.2.1.2.3.3 | Ejecutar la Revisión de procesos | 1d | 2020-02-07 | 2020-02-07 | 104 | 2011-06-03 | 2011-06-03 | 1d | 27d |  | 0% | 0% |
| 106 | 1.2.1.2.3.4 | Levantar la No Conformidad | 1d | 2020-02-07 | 2020-02-07 | 104 | 2011-06-03 | 2011-06-03 | 1d | 25d | 0d | 0% | 0% |
| 107 | 1.2.1.2.3.5 | Realizar el seguimiento | 1d | 2020-02-10 | 2020-02-10 | 106 | 2011-06-06 | 2011-06-06 | 1d | 25d | 0d | 0% | 0% |
| 108 | 1.2.1.2.3.6 | Elaborar e Informar las actividades de QA a la Gerencia del Servicio | 1d | 2020-02-11 | 2020-02-11 | 107 | 2011-06-07 | 2011-06-07 | 1d | 25d |  | 0% | 0% |
| 109 | 1.2.1.2.4 | **Validación del cliente** | 2d | 2020-02-05 | 2020-02-06 |  | 2011-06-01 | 2011-06-02 | 2d | 28d |  | 0% | 0% |
| 110 | 1.2.1.2.4.1 | Revisión de estrategía de comunicación y formación | 1d | 2020-02-05 | 2020-02-05 |  | 2011-06-01 | 2011-06-01 | 1d | 28d | 0d | 0% | 0% |
| 111 | 1.2.1.2.4.2 | Adecuación de cambios | 1d | 2020-02-06 | 2020-02-06 | 110 | 2011-06-02 | 2011-06-02 | 1d | 28d |  | 0% | 0% |
| 112 | 1.2.1.2.5 | **Gestión de la configuración** | 1d | 2020-02-05 | 2020-02-05 |  | 2011-06-01 | 2011-06-01 | 1d | 29d |  | 0% | 0% |
| 113 | 1.2.1.2.5.1 | Realizar Control de Cambios a Baselines | 1d | 2020-02-05 | 2020-02-05 |  | 2011-06-01 | 2011-06-01 | 1d | 29d |  | 0% | 0% |
| 114 | 1.2.1.3 | **Desarrollo** | 5d | 2020-02-11 | 2020-02-17 |  | 2011-06-01 | 2011-06-01 | 1d |  |  | 0% | 0% |
| 115 | 1.2.1.3.1 | **Iteración 1** | 1d | 2020-02-11 | 2020-02-11 |  | 2011-06-01 | 2011-06-01 | 1d | 25d |  | 0% | 0% |
| 116 | 1.2.1.3.1.1 | Planificación de Formación | 1d | 2020-02-11 | 2020-02-11 |  | 2011-06-01 | 2011-06-01 | 1d | 25d |  | 0% | 0% |
| 117 | 1.2.1.3.1.2 | Codigo Fuente 1 | 1d | 2020-02-11 | 2020-02-11 |  | 2011-06-01 | 2011-06-01 | 1d | 25d |  | 0% | 0% |
| 118 | 1.2.1.3.2 | **Iteración 2** | 1d | 2020-02-11 | 2020-02-11 |  | 2011-06-01 | 2011-06-01 | 1d | 25d |  | 0% | 0% |
| 119 | 1.2.1.3.2.1 | Verificación de la planificación de formación y comunicación | 1d | 2020-02-11 | 2020-02-11 |  | 2011-06-01 | 2011-06-01 | 1d | 25d |  | 0% | 0% |
| 120 | 1.2.1.3.2.2 | Adecuación de Cambios | 1d | 2020-02-11 | 2020-02-11 |  | 2011-06-01 | 2011-06-01 | 1d | 25d |  | 0% | 0% |
| 121 | 1.2.1.3.2.3 | Casos de Prueba | 1d | 2020-02-11 | 2020-02-11 |  | 2011-06-01 | 2011-06-01 | 1d | 25d |  | 0% | 0% |
| 122 | 1.2.1.3.3 | **Iteración 3** | 1d | 2020-02-11 | 2020-02-11 |  | 2011-06-01 | 2011-06-01 | 1d | 25d |  | 0% | 0% |
| 123 | 1.2.1.3.3.1 | Solución en ambiente de Pruebas | 1d | 2020-02-11 | 2020-02-11 |  | 2011-06-01 | 2011-06-01 | 1d | 25d |  | 0% | 0% |
| 124 | 1.2.1.3.3.2 | Gestión de configuración (líneas de base) | 1d | 2020-02-11 | 2020-02-11 |  | 2011-06-01 | 2011-06-01 | 1d | 25d |  | 0% | 0% |
| 125 | 1.2.1.3.3.3 | Validación de Usuario | 1d | 2020-02-11 | 2020-02-11 |  | 2011-06-01 | 2011-06-01 | 1d | 25d |  | 0% | 0% |
| 126 | 1.2.1.3.3.4 | Aceptación | 1d | 2020-02-11 | 2020-02-11 |  | 2011-06-01 | 2011-06-01 | 1d | 25d |  | 0% | 0% |
| 127 | 1.2.1.3.3.5 | Aceptación | 1d | 2020-02-11 | 2020-02-11 |  | 2011-06-01 | 2011-06-01 | 1d | 25d |  | 0% | 0% |

| ID | WBS | Task | Type | Duration | Start | Finish | Predecessors | Baseline start | Baseline finish | Baseline duration | Total slack | Free slack | Text6 | Text7 |
| --- | --- | --- | --- | --- | --- | --- | --- | --- | --- | --- | --- | --- | --- | --- |
| 128 | 1.2.1.4 | **Implementación** |  | 1d | 2020-02-17 | 2020-02-18 | 114 | 2011-06-02 | 2011-06-03 | 2d |  |  | 0% | 0% |
| 129 | 1.2.1.4.1 | **Iteración 1** |  | 0d | 2020-02-17 | 2020-02-17 |  | 2011-06-02 | 2011-06-03 | 2d | 21d |  | 0% | 0% |
| 130 | 1.2.1.4.1.1 | Planificación de Formación | milestone | 0d | 2020-02-17 | 2020-02-17 |  | 2011-06-02 | 2011-06-02 | 1d | 21d | 0d | 0% | 0% |
| 131 | 1.2.1.4.1.2 | Solución en Procucción | milestone | 0d | 2020-02-17 | 2020-02-17 | 130 | 2011-06-03 | 2011-06-03 | 1d | 21d |  | 0% | 0% |
